# Lịch Trình Sách Thiếu Nhi

Schedule from MS Project, 2015-04-06 to 2015-11-26, costs in $.
Lucerne Publishing

## Calendars

- Standard: Mon-Fri 08:00-12:00, 13:00-17:00; Sat-Sun off.
- Monday-Wednesday: Mon-Wed 08:00-12:00, 13:00-17:00; Thu-Sun off.

## Resources

| Resource | Group | Unit | Rate |
| --- | --- | --- | --- |
| Carole Poland | Editorial |  | 52.5 |
| Copyeditors | Editorial |  | 45 |
| Dan Jump | Design |  | 75.5 |
| Hany Morcos | Editorial |  | 38.75 |
| Jane Dow | Editorial |  | 63.25 |
| Jun Cao | Editorial |  | 42 |
| Luis Sousa | Design |  | 70 |
| Printing Service | Production |  |  |
| Travel | Other |  |  |
| Tad Orman | Other |  |  |
| Color Setting Services | Production |  |  |
| Bound galley proofs | Production | copies | 15 |
| Hoàng Thanh Trà |  |  |  |
| Nguyễn Thúy Kiều |  |  |  |
| Lê Thu Khương |  |  |  |
| Trần Thị Cẩm Tú |  |  |  |
| Nguyễn Thị Phương Mai |  |  |  |
| Nguyễn Thị Anh Thư |  |  |  |
| Vân Anh |  |  |  |
| Linh |  |  |  |
| Vy |  |  |  |

## Schedule

| ID | WBS | Task | Type | Duration | Start | Finish | Predecessors | Baseline start | Baseline finish | Baseline duration | Total slack | Constraint | Deadline | Resources | Work | Cost | Baseline cost | Editorial Focus |
| --- | --- | --- | --- | --- | --- | --- | --- | --- | --- | --- | --- | --- | --- | --- | --- | --- | --- | --- |
| 1 | 1 | **Cuộc họp nhân viên biên tập** |  | 60.12d | 2015-04-13 08:00 | 2015-07-06 09:00 |  | 2015-04-13 08:00 | 2015-07-06 09:00 | 60.12d | 103.5d |  |  |  | 45.5h | 2,223 | 2,223 |  |
| 2 | 1.1 | Editorial staff meeting 1 |  | 1h | 2015-04-13 08:00 | 2015-04-13 09:00 |  | 2015-04-13 08:00 | 2015-04-13 09:00 | 1h | 163.5d | start no earlier than 2015-04-13 08:00 |  | Carole Poland; Jun Cao; Hany Morcos; Dan Jump [50%] | 3.5h | 171 | 171 |  |
| 3 | 1.2 | Editorial staff meeting 2 |  | 1h | 2015-04-20 08:00 | 2015-04-20 09:00 |  | 2015-04-20 08:00 | 2015-04-20 09:00 | 1h | 158.5d | start no earlier than 2015-04-20 08:00 |  | Carole Poland; Jun Cao; Hany Morcos; Dan Jump [50%] | 3.5h | 171 | 171 |  |
| 4 | 1.3 | Editorial staff meeting 3 |  | 1h | 2015-04-27 08:00 | 2015-04-27 09:00 |  | 2015-04-27 08:00 | 2015-04-27 09:00 | 1h | 153.5d | start no earlier than 2015-04-27 08:00 |  | Carole Poland; Jun Cao; Hany Morcos; Dan Jump [50%] | 3.5h | 171 | 171 |  |
| 5 | 1.4 | Editorial staff meeting 4 |  | 1h | 2015-05-04 08:00 | 2015-05-04 09:00 |  | 2015-05-04 08:00 | 2015-05-04 09:00 | 1h | 148.5d | start no earlier than 2015-05-04 08:00 |  | Carole Poland; Jun Cao; Hany Morcos; Dan Jump [50%] | 3.5h | 171 | 171 |  |
| 6 | 1.5 | Editorial staff meeting 5 |  | 1h | 2015-05-11 08:00 | 2015-05-11 09:00 |  | 2015-05-11 08:00 | 2015-05-11 09:00 | 1h | 143.5d | start no earlier than 2015-05-11 08:00 |  | Carole Poland; Jun Cao; Hany Morcos; Dan Jump [50%] | 3.5h | 171 | 171 |  |
| 7 | 1.6 | Editorial staff meeting 6 |  | 1h | 2015-05-18 08:00 | 2015-05-18 09:00 |  | 2015-05-18 08:00 | 2015-05-18 09:00 | 1h | 138.5d | start no earlier than 2015-05-18 08:00 |  | Carole Poland; Jun Cao; Hany Morcos; Dan Jump [50%] | 3.5h | 171 | 171 |  |
| 8 | 1.7 | Editorial staff meeting 7 |  | 1h | 2015-05-25 08:00 | 2015-05-25 09:00 |  | 2015-05-25 08:00 | 2015-05-25 09:00 | 1h | 133.5d | start no earlier than 2015-05-25 08:00 |  | Carole Poland; Jun Cao; Hany Morcos; Dan Jump [50%] | 3.5h | 171 | 171 |  |
| 9 | 1.8 | Editorial staff meeting 8 |  | 1h | 2015-06-01 08:00 | 2015-06-01 09:00 |  | 2015-06-01 08:00 | 2015-06-01 09:00 | 1h | 128.5d | start no earlier than 2015-06-01 08:00 |  | Carole Poland; Jun Cao; Hany Morcos; Dan Jump [50%] | 3.5h | 171 | 171 |  |
| 10 | 1.9 | Editorial staff meeting 9 |  | 1h | 2015-06-08 08:00 | 2015-06-08 09:00 |  | 2015-06-08 08:00 | 2015-06-08 09:00 | 1h | 123.5d | start no earlier than 2015-06-08 08:00 |  | Carole Poland; Jun Cao; Hany Morcos; Dan Jump [50%] | 3.5h | 171 | 171 |  |
| 11 | 1.10 | Editorial staff meeting 10 |  | 1h | 2015-06-15 08:00 | 2015-06-15 09:00 |  | 2015-06-15 08:00 | 2015-06-15 09:00 | 1h | 118.5d | start no earlier than 2015-06-15 08:00 |  | Carole Poland; Jun Cao; Hany Morcos; Dan Jump [50%] | 3.5h | 171 | 171 |  |
| 12 | 1.11 | Editorial staff meeting 11 |  | 1h | 2015-06-22 08:00 | 2015-06-22 09:00 |  | 2015-06-22 08:00 | 2015-06-22 09:00 | 1h | 113.5d | start no earlier than 2015-06-22 08:00 |  | Carole Poland; Jun Cao; Hany Morcos; Dan Jump [50%] | 3.5h | 171 | 171 |  |
| 13 | 1.12 | Editorial staff meeting 12 |  | 1h | 2015-06-29 08:00 | 2015-06-29 09:00 |  | 2015-06-29 08:00 | 2015-06-29 09:00 | 1h | 108.5d | start no earlier than 2015-06-29 08:00 |  | Carole Poland; Jun Cao; Hany Morcos; Dan Jump [50%] | 3.5h | 171 | 171 |  |
| 14 | 1.13 | Editorial staff meeting 13 |  | 1h | 2015-07-06 08:00 | 2015-07-06 09:00 |  | 2015-07-06 08:00 | 2015-07-06 09:00 | 1h | 103.5d | start no earlier than 2015-07-06 08:00 |  | Carole Poland; Jun Cao; Hany Morcos; Dan Jump [50%] | 3.5h | 171 | 171 |  |
| 15 | 2 | **Tiếp nhận bản thảo** |  | 35.25d | 2015-04-06 08:00 | 2015-05-25 10:00 |  | 2015-04-06 08:00 | 2015-05-25 10:00 | 35.25d | 0d |  |  |  | 476h |  |  |  |
| 16 | 2.1 | Biên tập nội dung | milestone | 0d | 2015-04-06 08:00 | 2015-04-06 08:00 |  | 2015-04-06 08:00 | 2015-04-06 08:00 | 0d | 0d |  |  |  |  |  |  |  |
| 17 | 2.2 | Xem xét tranh minh họa gốc |  | 15d | 2015-04-06 08:00 | 2015-04-29 17:00 | 16 | 2015-04-06 08:00 | 2015-04-29 17:00 | 15d | 0d |  |  | Hoàng Thanh Trà | 120h |  |  | Full developmental edit |
| 18 | 2.3 | Tác giả xem lại bản biên tập nội dung |  | 10.25d | 2015-04-23 08:00 | 2015-05-07 10:00 | 17FS-5d | 2015-04-23 08:00 | 2015-05-07 10:00 | 10.25d | 0d |  |  | Nguyễn Thúy Kiều; Lê Thu Khương | 164h |  |  |  |
| 19 | 2.4 | Bàn giao cho bộ phận biên tập |  | 12d | 2015-05-07 10:00 | 2015-05-25 10:00 | 17, 18 | 2015-05-07 10:00 | 2015-05-25 10:00 | 12d | 0d |  |  | Trần Thị Cẩm Tú; Nguyễn Thị Anh Thư | 192h |  |  | Incorp must-fix issues |
| 20 | 2.5 | Biên tập | milestone | 0d | 2015-05-25 10:00 | 2015-05-25 10:00 | 19 | 2015-05-25 10:00 | 2015-05-25 10:00 | 0d | 0d |  | 2015-05-29 17:00 | Hoàng Thanh Trà |  |  |  |  |
| 21 | 3 | **Sắp xếp bản thảo để biên tập lại** |  | 29.12d | 2015-05-25 10:00 | 2015-07-03 11:00 | 15 | 2015-05-25 10:00 | 2015-07-03 11:00 | 29.12d | 0d |  |  |  | 444h |  |  |  |
| 22 | 3.1 | Biên tập lại |  | 5.12d | 2015-05-25 10:00 | 2015-06-01 11:00 |  | 2015-05-25 10:00 | 2015-06-01 11:00 | 5.12d | 0d |  |  | Nguyễn Thúy Kiều; Nguyễn Thị Phương Mai | 82h |  |  | Address outstanding line edit issues |
| 23 | 3.2 | Tác giả xem lại bản biên tập lại |  | 11.25d | 2015-06-01 11:00 | 2015-06-16 14:00 | 22 | 2015-06-01 11:00 | 2015-06-16 14:00 | 11.25d | 0d |  |  | Nguyễn Thị Anh Thư [200%] | 180h |  |  | Style Guide compliance |
| 24 | 3.3 | Biên tập và chỉnh sửa |  | 10d | 2015-06-16 14:00 | 2015-06-30 14:00 | 23 | 2015-06-16 14:00 | 2015-06-30 14:00 | 10d | 0d |  |  | Trần Thị Cẩm Tú; Nguyễn Thị Anh Thư [25%] | 100h |  |  | Incorp must-fix issues |
| 25 | 3.4 | Bàn giao cho bộ phận sản xuất |  | 5.25d | 2015-06-26 09:00 | 2015-07-03 11:00 | 24FS-2.5% | 2015-06-26 09:00 | 2015-07-03 11:00 | 5.25d | 0d |  |  | Hoàng Thanh Trà; Nguyễn Thị Phương Mai | 82h |  |  | Incorp must-fix issues |
| 26 | 3.5 | Thiết kế và sản xuất | milestone | 0d | 2015-07-03 11:00 | 2015-07-03 11:00 | 25 | 2015-07-03 11:00 | 2015-07-03 11:00 | 0d | 0d |  |  | Nguyễn Thúy Kiều |  |  |  |  |

| ID | WBS | Task | Type | Duration | Start | Finish | Predecessors | Baseline start | Baseline finish | Baseline duration | Total slack | Free slack | Constraint | Calendar | Resources | Work | Cost | Baseline cost |
| --- | --- | --- | --- | --- | --- | --- | --- | --- | --- | --- | --- | --- | --- | --- | --- | --- | --- | --- |
| 27 | 4 | **Thiết lập trang** |  | 58.25d | 2015-07-03 11:00 | 2015-09-23 14:00 | 21 | 2015-07-03 11:00 | 2015-09-23 14:00 | 58.25d | 0d |  |  |  |  | 1048h | 1,800 | 1,800 |
| 28 | 4.1 | Thiết kế minh họa trong sách |  | 15d | 2015-07-03 11:00 | 2015-07-24 11:00 |  | 2015-07-03 11:00 | 2015-07-24 11:00 | 15d | 0d |  |  |  | Lê Thu Khương | 120h |  |  |
| 29 | 4.2 | Đánh giá bản in lần 1 |  | 15.25d | 2015-07-03 11:00 | 2015-07-24 14:00 | 28SS | 2015-07-03 11:00 | 2015-07-24 14:00 | 15.25d | 0d |  |  |  | Nguyễn Thúy Kiều; Vân Anh | 244h |  |  |
| 30 | 4.3 | **Hiệu đính và lập chỉ mục** |  | 30d | 2015-07-24 14:00 | 2015-09-04 14:00 | 29 | 2015-07-24 14:00 | 2015-09-04 14:00 | 30d | 0d |  |  |  |  | 440h |  |  |
| 31 | 4.3.1 | Áp dụng các chỉnh sửa từ bản in lần 1 |  | 10d | 2015-07-24 14:00 | 2015-08-07 14:00 |  | 2015-07-24 14:00 | 2015-08-07 14:00 | 10d | 0d |  | start no earlier than 2015-07-17 08:00 |  | Trần Thị Cẩm Tú; Nguyễn Thị Anh Thư | 160h |  |  |
| 32 | 4.3.2 | Gửi bản đã hiệu đính cho bộ phận sản xuất |  | 10d | 2015-08-07 14:00 | 2015-08-21 14:00 | 31 | 2015-08-07 14:00 | 2015-08-21 14:00 | 10d | 0d |  |  |  | Nguyễn Thúy Kiều; Nguyễn Thị Phương Mai | 160h |  |  |
| 33 | 4.3.3 | Nhập các chỉnh sửa trang và chỉ mục | milestone | 0d | 2015-08-21 14:00 | 2015-08-21 14:00 | 32 | 2015-08-21 14:00 | 2015-08-21 14:00 | 0d | 0d |  |  |  | Nguyễn Thúy Kiều |  |  |  |
| 34 | 4.3.4 | Thiết kế bìa sách |  | 5d | 2015-08-21 14:00 | 2015-08-28 14:00 | 33 | 2015-08-21 14:00 | 2015-08-28 14:00 | 5d | 0d |  |  |  | Lê Thu Khương; Nguyễn Thị Phương Mai | 80h |  |  |
| 35 | 4.3.5 | Đánh giá bản in lần 2 |  | 5d | 2015-08-28 14:00 | 2015-09-04 14:00 | 34 | 2015-08-28 14:00 | 2015-09-04 14:00 | 5d | 0d |  |  |  | Vân Anh | 40h |  |  |
| 36 | 4.4 | **Hiệu đính và xem xét** |  | 13d | 2015-09-04 14:00 | 2015-09-23 14:00 |  | 2015-09-04 14:00 | 2015-09-23 14:00 | 13d | 0d |  |  |  |  | 124h | 300 | 300 |
| 37 | 4.4.1 | Gửi bản đã hiệu đính cho bộ phận sản xuất |  | 6.5d | 2015-09-04 14:00 | 2015-09-15 09:00 | 35 | 2015-09-04 14:00 | 2015-09-15 09:00 | 6.5d | 0d |  |  |  | Nguyễn Thúy Kiều | 52h |  |  |
| 38 | 4.4.2 | Đánh giá cuối cùng | milestone | 0d | 2015-09-15 09:00 | 2015-09-15 09:00 | 37 | 2015-09-15 09:00 | 2015-09-15 09:00 | 0d | 0d |  |  |  | Nguyễn Thúy Kiều |  |  |  |
| 39 | 4.4.3 | Thiết kế trang web đi kèm với sách |  | 5d | 2015-09-16 14:00 | 2015-09-23 14:00 | 38 | 2015-09-16 14:00 | 2015-09-23 14:00 | 5d | 0d |  |  |  | Hoàng Thanh Trà [50%]; Bound galley proofs [20 copies]; Nguyễn Thúy Kiều [50%]; Lê Thu Khương | 72h | 300 | 300 |
| 40 | 4.5 | **Tạo mẫu thiết kế** |  | 10d | 2015-09-04 14:00 | 2015-09-18 14:00 | 30 | 2015-09-04 14:00 | 2015-09-18 14:00 | 10d | 3d |  |  |  |  | 120h | 1,500 | 1,500 |
| 41 | 4.5.1 | Xem xét với tác giả |  | 4.5d | 2015-09-04 14:00 | 2015-09-16 14:00 |  | 2015-09-04 14:00 | 2015-09-16 14:00 | 4.5d | 3d | 0d |  |  | Nguyễn Thúy Kiều; Vân Anh | 72h |  |  |
| 42 | 4.5.2 | Chuẩn bị màu sắc và in ấn |  | 2d | 2015-09-16 14:00 | 2015-09-18 14:00 | 41 | 2015-09-16 14:00 | 2015-09-18 14:00 | 2d | 3d |  |  |  | Travel [0.1%]; Trần Thị Cẩm Tú; Nguyễn Thị Phương Mai; Vân Anh | 48h | 1,500 | 1,500 |
| 43 | 5 | **Gửi tới nhà in** |  | 46d | 2015-09-23 14:00 | 2015-11-26 14:00 | 40 | 2015-09-23 14:00 | 2015-11-26 14:00 | 46d | 0d |  |  |  |  | 328h | 5,000 | 5,000 |
| 44 | 5.1 | Tạo bản mẫu in |  | 1d | 2015-09-23 14:00 | 2015-09-28 14:00 | 36 | 2015-09-23 14:00 | 2015-09-28 14:00 | 1d | 0d |  |  | Monday-Wednesday | Nguyễn Thúy Kiều | 8h |  |  |
| 45 | 5.2 | In ấn và vận chuyển |  | 10d | 2015-09-28 14:00 | 2015-10-12 14:00 | 44 | 2015-09-28 14:00 | 2015-10-12 14:00 | 10d | 0d |  |  |  | Linh | 80h | 5,000 | 5,000 |
| 46 | 5.3 | Chuẩn bị ra mắt sách |  | 30d | 2015-10-15 14:00 | 2015-11-26 14:00 | 45FS+3d | 2015-10-15 14:00 | 2015-11-26 14:00 | 30d | 0d |  |  |  | Vy | 240h |  |  |
| 47 | 6 | **Lập kế hoạch ra mắt** |  | 22d | 2015-09-28 14:00 | 2015-10-28 14:00 |  | 2015-09-28 14:00 | 2015-10-28 14:00 | 22d | 21d |  |  |  |  | 236h | 2,420 | 2,420 |
| 48 | 6.1 | Phân công các thành viên trong nhóm ra mắt |  | 5d | 2015-09-28 14:00 | 2015-10-05 14:00 | 44 | 2015-09-28 14:00 | 2015-10-05 14:00 | 5d | 21d | 0d |  |  | Hoàng Thanh Trà [50%]; Lê Thu Khương | 60h |  |  |
| 49 | 6.2 | Hoàn thành bảng câu hỏi tác giả |  | 1d | 2015-10-05 14:00 | 2015-10-06 14:00 | 48 | 2015-10-05 14:00 | 2015-10-06 14:00 | 1d | 21d | 0d |  |  | Carole Poland | 8h | 420 | 420 |
| 50 | 6.3 | Lên lịch phỏng vấn tác giả |  | 5d | 2015-10-06 14:00 | 2015-10-13 14:00 | 49 | 2015-10-06 14:00 | 2015-10-13 14:00 | 5d | 21d | 0d |  |  | Travel [0.1%]; Nguyễn Thúy Kiều; Trần Thị Cẩm Tú | 80h | 2,000 | 2,000 |
| 51 | 6.4 | Thiết kế và đặt mua tài liệu quảng cáo |  | 1d | 2015-10-13 14:00 | 2015-10-14 14:00 | 50 | 2015-10-13 14:00 | 2015-10-14 14:00 | 1d | 21d | 0d |  |  | Nguyễn Thúy Kiều | 8h |  |  |
| 52 | 6.5 | Design and order marketing material |  | 10d | 2015-10-14 14:00 | 2015-10-28 14:00 | 51 | 2015-10-14 14:00 | 2015-10-28 14:00 | 10d | 21d |  |  |  | Nguyễn Thúy Kiều | 80h |  |  |
