# New Book Launch schedule

Schedule from MS Project, 2015-01-05 to 2015-02-24, A marks actual dates.
New book launch schedule
Lucerne Publishing
New children's book for spring release

## Calendars

- Standard: Mon-Fri 08:00-12:00, 13:00-17:00; Sat-Sun off. Exceptions (off unless hours are given): 2015-01-22 (Staff at morale event).

## Resources

| Resource | Rate | Notes |
| --- | --- | --- |
| Jun Cao | 42 |  |
| Sharon Salavaria | 27.5 | Sharons standard pay rate is adjusted for her half-time work schedule. |
| Toby Nixon | 67.5 | Toby worked on launch campaigns for Toni Poes previous two books. |
| Toni Poe |  |  |
| Zac Woodall | 55 |  |
| Copyeditors | 45 |  |
| Travel |  |  |
| Carole Poland | 52.5 |  |
| Dan Jump | 75.5 |  |
| Hany Morcos | 38.75 |  |
| Jane Dow | 55 |  |
| John Evans | 69.5 |  |
| Katie Jordan | 48 |  |
| Luis Sousa | 70 |  |
| Printing Service |  |  |
| Robin Wood | 44 |  |
| Vikas Jain | 22 |  |
| William Flash |  |  |
| Trần Thanh Điện |  |  |
| Tạ Thanh Hải |  |  |
| Phạm Tấn Hoàng |  |  |
| Lại Hữu Diệp |  |  |
| Nguyễn Thúy An |  |  |
| Trương Thanh Mai |  |  |
| Trần Thanh Điện Lê Xuân Thy Lại Hữu Diệp |  |  |
| Huỳnh Phương Nam |  |  |
| 16:00 |  |  |
| -strong |  |  |
| -heart |  |  |
| :> |  |  |
| :o |  |  |
| :-(( |  |  |
| :-h |  |  |
| Lê Xuân Thy |  |  |
| Nguyễn Thanh Thy |  |  |

## Schedule

| ID | WBS | Task | Type | Duration | Start | Finish | Predecessors | Complete | Remaining | Total slack | Free slack | Resources | Work | Actual work |
| --- | --- | --- | --- | --- | --- | --- | --- | --- | --- | --- | --- | --- | --- | --- |
| 1 | 1 | **Giai đoạn lập kế hoạch** |  | 11d | 2015-01-05 A | 2015-01-19 |  |  | 11d |  |  |  | 248h |  |
| 2 | 1.1 | Giao nhiệm vụ cho nhóm ra mắt sách |  | 1d | 2015-01-05 | 2015-01-05 |  |  |  | 0d |  | Trần Thanh Điện | 8h |  |
| 3 | 1.2 | Hoàn thành bảng câu hỏi tác giả |  | 1w | 2015-01-06 | 2015-01-12 | 2 |  |  | 5d |  | Tạ Thanh Hải | 40h |  |
| 4 | 1.3 | Sắp xếp phỏng vấn tác giả |  | 1w | 2015-01-06 | 2015-01-12 | 2 |  |  | 5d |  | Phạm Tấn Hoàng | 40h |  |
| 5 | 1.4 | Thiết kế và đặt hàng tài liệu marketing |  | 2w | 2015-01-05 | 2015-01-19 | 2 |  |  | 0d |  | Lại Hữu Diệp; Nguyễn Thúy An | 160h |  |
| 6 | 1.5 | Hoàn thành kế hoạch marketing! | milestone | 0d | 2015-01-19 A | 2015-01-19 A | 5 | 100% |  |  |  |  |  |  |
| 7 | 2 | **Giai đoạn ra mắt nội bộ** |  | 13d | 2015-01-20 A | 2015-02-06 | 1 | 67% | 4.33d |  |  |  | 332h | 204h |
| 8 | 2.1 | Họp khởi động ra mắt sách |  | 1d | 2015-01-20 A | 2015-01-20 A |  | 100% |  |  |  | Trương Thanh Mai [50%]; Nguyễn Thúy An | 12h | 12h |
| 9 | 2.2 | Chuẩn bị báo cáo P&L (Lãi & Lỗ) của sách |  | 3d | 2015-01-20 A | 2015-01-26 A | 8 | 100% |  |  |  | Trần Thanh Điện | 24h | 24h |
| 10 | 2.3 | Lập kế hoạch lịch trình di chuyển của tác giả |  | 7d | 2015-01-20 A | 2015-01-30 A | 8 | 100% |  |  |  | Lê Xuân Thy | 56h | 56h |
| 11 | 2.4 | Chuẩn bị kênh bán hàng |  | 7d | 2015-01-21 A | 2015-01-30 A | 8 | 100% |  |  |  | Lại Hữu Diệp; Huỳnh Phương Nam | 112h | 112h |
| 12 | 2.5 | Hoàn thành biểu mẫu ra mắt sách |  | 2d | 2015-02-02 | 2015-02-03 | 11 |  |  | 3d |  | Nguyễn Thúy An; Lê Xuân Thy | 32h |  |
| 13 | 2.6 | Chuẩn bị danh sách bán hàng của sách |  | 1w | 2015-02-02 | 2015-02-06 | 8, 11 |  |  | -2d | 0d | Huỳnh Phương Nam; Lại Hữu Diệp | 80h |  |
| 14 | 2.7 | Phân phát tài liệu marketing |  | 2d | 2015-02-09 | 2015-02-10 | 13 |  |  | -2d | 0d | Lại Hữu Diệp | 16h |  |
| 15 | 3 | **Giai đoạn ra mắt công khai** |  | 12d? | 2015-02-09 A | 2015-02-24 | 7 | 21% | 9.5d? | 0d |  | :o | 392h | 100h |
| 16 | 3.1 | **Các hoạt động tác giả** |  | 2d | 2015-02-09 | 2015-02-10 |  |  |  |  |  | :-(( | 32h |  |
| 17 | 3.1.1 | Phỏng vấn tác giả trên radio |  | 1d | 2015-02-09 | 2015-02-09 |  |  |  | 10d | 0d | Tạ Thanh Hải | 8h |  |
| 18 | 3.1.2 | Tác giả đọc sách và ký tặng tại hội chợ sách |  | 1d | 2015-02-10 | 2015-02-10 | 17 |  |  | 10d |  | Tạ Thanh Hải | 8h |  |
| 20 | 3.2 | Phân phối bộ công cụ bán sách |  | 2d | 2015-02-09 | 2015-02-10 |  |  |  | 3d | 0d | Lại Hữu Diệp | 16h |  |
| 21 | 3.3 | Phối hợp với các bài viết trên tạp chí |  | 7d | 2015-02-11 | 2015-02-19 | 20 |  |  | 3d |  | Lại Hữu Diệp | 56h |  |
| 22 | 3.4 | Ra mắt cổng web công khai cho sách |  | 1w | 2015-02-11 A | 2015-02-17 A | 20 | 100% |  |  |  | Nguyễn Thanh Thy; Nguyễn Thúy An | 80h | 80h |
| 23 | 3.5 | Ra mắt chương trình truyền thông xã hội cho sách |  | 1w | 2015-02-18 | 2015-02-24 | 22 |  |  | 0d |  | Nguyễn Thúy An; Nguyễn Thanh Thy | 80h |  |
| 24 | 3.6 | Hoàn thành việc ra mắt | milestone | 0d | 2015-02-24 | 2015-02-24 | 21, 22, 23 |  |  | 0d |  |  |  |  |
